# LEAPFROG-SERC-Fall2020

Schedule from ProjectLibre, 2020-09-09 to 2020-11-30.

## Calendars

- Standard: Mon-Fri 08:00-12:00, 13:00-17:00; Sat-Sun off.

## Resources

| Resource | Group |
| --- | --- |
| Unassigned |  |
| Antariksh Narain | Software / Hardware |
| Camden Jones | Software |
| Kunal Singla | Software |
| Garrett Gibo | Software |
| Andrew Fletcher | Software |
| Jose | Hardware / Software |
| Isabel Yarwood Perez | Hardware / Competition |
| Kenya Foster | Mechanical |
| Dimitri Gianousopoulos | Hardware |
| Shreya Nagpal | Competition |
| Bianca Monique Luansing | Competition |
| Than Tran | Competition / Software |
| Michael Smat | Mechanical |
| Hubert Wang | Hardware |
| Dan Borgan | Mechanical |
| Nikita Persikov | Hardware / Mechanical |
| Dave Barnhart | Hardware / Mechanical |

## Schedule

| ID | WBS | Task | Duration | Start | Finish | Predecessors | Constraint | Resources |
| --- | --- | --- | --- | --- | --- | --- | --- | --- |
| 1 | 1 | **Flight Systems** | 15.5d? | 2020-09-14 | 2020-10-05 |  |  |  |
| 2 | 1.1 | **CAD** | 8d? | 2020-09-14 | 2020-09-23 |  |  |  |
| 3 | 1.1.1 | **Design Base structure** | 5d? | 2020-09-14 | 2020-09-18 |  | start no earlier than 2020-09-14 |  |
| 4 | 1.1.1.1 | Size all pieces | 1d | 2020-09-14 | 2020-09-14 |  |  | Michael Smat |
| 5 | 1.1.1.2 | Design all Leg & SuperStructure | 3d | 2020-09-15 | 2020-09-17 | 4 | start no earlier than 2020-09-14 | Michael Smat |
| 6 | 1.1.1.3 | Locate Components in X/Y | 1d? | 2020-09-18 | 2020-09-18 | 5 |  | Michael Smat |
| 7 | 1.1.2 | Gimbal Design | 3d | 2020-09-18 | 2020-09-22 | 5 | start no earlier than 2020-09-14 | Michael Smat |
| 8 | 1.1.3 | Gimbal Attach pts to structure and engine | 1d? | 2020-09-23 | 2020-09-23 | 7 |  | Michael Smat |
| 9 | 1.1.4 | **ACS Thrusters** | 6d | 2020-09-14 | 2020-09-22 |  |  |  |
| 10 | 1.1.4.1 | 4-Arm Configuration Design | 3d | 2020-09-14 | 2020-09-17 |  | start no earlier than 2020-09-14 | Michael Smat |
| 11 | 1.1.4.2 | Mounting of Valves and Wiring on Arm | 3d | 2020-09-17 | 2020-09-22 | 10 |  | Kenya Foster |
| 12 | 1.1.5 | Roll Cage Design | 5d | 2020-09-14 | 2020-09-21 |  | start no earlier than 2020-09-14 | Hubert Wang |
| 13 | 1.2 | **Build and Mfr 1st Vehicle** | 15.5d? | 2020-09-14 | 2020-10-05 |  | start no earlier than 2020-09-14 |  |
| 14 | 1.2.1 | **Roll Cage** | 7d | 2020-09-21 | 2020-09-30 |  |  |  |
| 15 | 1.2.1.1 | Purchase Parts | 5d | 2020-09-21 | 2020-09-28 | 12 |  | Hubert Wang |
| 16 | 1.2.1.2 | Assemble Parts | 2d | 2020-09-28 | 2020-09-30 | 15 |  |  |
| 17 | 1.2.2 | **Legs** | 8d | 2020-09-21 | 2020-09-30 |  |  |  |
| 18 | 1.2.2.1 | Ankle 3D Print ? | 2d | 2020-09-21 | 2020-09-22 |  | start no earlier than 2020-09-21 | Dan Borgan |
| 19 | 1.2.2.2 | Thigh manufacture ? | 2d | 2020-09-23 | 2020-09-24 | 18 | start no earlier than 2020-09-21 | Dan Borgan |
| 20 | 1.2.2.3 | Spring suspension ? | 2d | 2020-09-25 | 2020-09-28 | 19 |  | Dan Borgan |
| 21 | 1.2.2.4 | Vehicle connector ? | 2d | 2020-09-29 | 2020-09-30 | 20 |  | Dan Borgan |
| 22 | 1.2.3 | **Base Platforms** | 4d? | 2020-09-15 | 2020-09-18 |  |  |  |
| 23 | 1.2.3.1 | Vacuum Epoxy Top and Bottom | 1d | 2020-09-15 | 2020-09-15 |  | start no earlier than 2020-09-15 | Dave Barnhart |
| 24 | 1.2.3.2 | Cut circular platforms | 1d | 2020-09-16 | 2020-09-16 | 23 |  | Dave Barnhart |
| 25 | 1.2.3.3 | Layout component location, show drill holes | 1d? | 2020-09-17 | 2020-09-17 | 24 |  |  |
| 26 | 1.2.3.4 | Pre-Drill mounting holes? | 1d? | 2020-09-18 | 2020-09-18 | 25 |  |  |

| ID | WBS | Task | Duration | Start | Finish | Predecessors | Constraint | Resources |
| --- | --- | --- | --- | --- | --- | --- | --- | --- |
| 27 | 1.2.4 | **Base connectors** | 12.5d? | 2020-09-17 | 2020-10-05 |  |  |  |
| 28 | 1.2.4.1 | Connectors | 5d | 2020-09-21 | 2020-09-25 | 22 |  | Nikita Persikov; Dan Borgan |
| 29 | 1.2.4.2 | Attach Legs | 2.5d | 2020-10-01 | 2020-10-05 | 17 |  | Dan Borgan; Nikita Persikov |
| 30 | 1.2.4.3 | 3D Print Mechanical Fuses | 1d? | 2020-09-17 | 2020-09-17 |  | start no earlier than 2020-09-17 | Dave Barnhart |
| 31 | 1.2.5 | **Gimbal** | 3d | 2020-09-21 | 2020-09-23 | 22 |  |  |
| 32 | 1.2.5.1 | Assemble Ring 1 | 1d | 2020-09-21 | 2020-09-21 |  |  | Nikita Persikov |
| 33 | 1.2.5.2 | Assemble Ring 2 | 1d | 2020-09-22 | 2020-09-22 | 32 |  | Nikita Persikov |
| 34 | 1.2.5.3 | Attach Rings to Engine | 1d | 2020-09-23 | 2020-09-23 | 33 |  | Nikita Persikov |
| 35 | 1.2.6 | **ACS Thrusters** | 6d | 2020-09-14 | 2020-09-21 |  |  |  |
| 36 | 1.2.6.1 | 3D Print Arms | 2d | 2020-09-14 | 2020-09-15 |  |  | Dave Barnhart |
| 37 | 1.2.6.2 | Attach Thruster Valves & Wiring | 2d | 2020-09-16 | 2020-09-17 | 36 |  | Dan Borgan |
| 38 | 1.2.6.3 | Mount Air Tanks | 1d | 2020-09-18 | 2020-09-18 | 37 |  | Nikita Persikov |
| 39 | 1.2.6.4 | Connect Air Lines | 1d | 2020-09-21 | 2020-09-21 | 38 |  | Nikita Persikov |
| 40 | 1.2.7 | **Linear Actuators** | 1d | 2020-09-24 | 2020-09-24 | 31 |  |  |
| 41 | 1.2.7.1 | Connect to base structure | 1d | 2020-09-24 | 2020-09-24 | 22 |  | Nikita Persikov |
| 42 | 1.2.7.2 | Mount and connect to engine | 1d | 2020-09-24 | 2020-09-24 | 31, 35 |  | Nikita Persikov |
| 43 | 1.2.8 | **Fuel System-Engine** | 2d? | 2020-09-18 | 2020-09-21 |  |  |  |
| 44 | 1.2.8.1 | 3D Print Fuel tank Mounts (2) | 1d? | 2020-09-18 | 2020-09-18 |  | start no earlier than 2020-09-18 | Dave Barnhart |
| 45 | 1.2.8.2 | Drill holes in Mounts, place on structure | 1d? | 2020-09-21 | 2020-09-21 | 44 |  |  |
| 46 | 2 | **Vehicle Assembly Sequence** | 0.5d | 2020-09-09 | 2020-09-09 |  |  |  |
| 47 | 2.1 | Connect fuel lines and place hold downs | 0.5d | 2020-09-09 | 2020-09-09 |  |  | Nikita Persikov; Michael Smat |
| 48 | 3 | **Software** | 56d? | 2020-09-14 | 2020-11-30 |  | start no earlier than 2020-09-14 |  |
| 49 | 3.1 | Wireless Control and Flight Shutdown | 1d? | 2020-09-14 | 2020-09-14 |  |  |  |
| 50 | 3.2 | **Flight Control** | 46d? | 2020-09-14 | 2020-11-16 |  |  |  |
| 51 | 3.2.1 | **ACS Thrusters** | 8d | 2020-09-14 | 2020-09-23 |  |  |  |
| 52 | 3.2.1.1 | Simultaneous Actuation | 1d | 2020-09-14 | 2020-09-14 |  | start no earlier than 2020-09-14 | Antariksh Narain |

| ID | WBS | Task | Duration | Start | Finish | Predecessors | Constraint | Resources |
| --- | --- | --- | --- | --- | --- | --- | --- | --- |
| 53 | 3.2.1.2 | **Control Loop** | 5d | 2020-09-15 | 2020-09-21 |  |  |  |
| 54 | 3.2.1.2.1 | Controller | 3d | 2020-09-15 | 2020-09-17 | 52 |  | Andrew Fletcher |
| 55 | 3.2.1.2.2 | Hardware Library | 1d | 2020-09-18 | 2020-09-18 | 54 |  | Antariksh Narain |
| 56 | 3.2.1.2.3 | Sensor Library | 1d | 2020-09-21 | 2020-09-21 | 55 |  | Antariksh Narain |
| 57 | 3.2.1.3 | Test on hardware | 2d | 2020-09-22 | 2020-09-23 | 35, 52, 53 |  | Antariksh Narain |
| 58 | 3.2.2 | **Thrust Vector Control-Engine** | 46d? | 2020-09-14 | 2020-11-16 |  |  |  |
| 59 | 3.2.2.1 | **Gimbal** | 13d | 2020-09-14 | 2020-09-30 |  |  |  |
| 60 | 3.2.2.1.1 | Move using linear actuator | 1d | 2020-09-14 | 2020-09-14 |  |  | Antariksh Narain |
| 61 | 3.2.2.1.2 | **Position feedback** | 2d | 2020-09-15 | 2020-09-16 |  |  |  |
| 62 | 3.2.2.1.2.1 | IMU Sensor | 2d | 2020-09-15 | 2020-09-16 | 60 |  | Antariksh Narain |
| 63 | 3.2.2.1.2.2 | Potentiometer Feedback | 2d | 2020-09-15 | 2020-09-16 | 60 |  | Antariksh Narain |
| 64 | 3.2.2.1.3 | PX4 Controller | 10d | 2020-09-17 | 2020-09-30 | 61 |  |  |
| 65 | 3.2.2.1.4 | Test with actuators | 5d | 2020-09-24 | 2020-09-30 | 31, 35, 60, 62, 63 |  | Antariksh Narain |
| 66 | 3.2.2.2 | **Engine Control** | 13d? | 2020-10-01 | 2020-10-19 |  |  |  |
| 67 | 3.2.2.2.1 | Pro Interface control SW | 3d | 2020-10-01 | 2020-10-05 | 59 |  | Antariksh Narain |
| 68 | 3.2.2.2.2 | PX4 Controller SW | 5d | 2020-10-06 | 2020-10-12 | 67 |  | Garrett Gibo; Andrew Fletcher |
| 69 | 3.2.2.2.3 | Engine and ACS S/W Review | 1d? | 2020-10-13 | 2020-10-13 | 68 |  |  |
| 70 | 3.2.2.2.4 | Test Engine Thrust | 5d | 2020-10-13 | 2020-10-19 | 68 |  | Antariksh Narain |
| 71 | 3.2.2.3 | **Control Loop** | 15d | 2020-10-20 | 2020-11-09 |  |  |  |
| 72 | 3.2.2.3.1 | Hardware Library | 5d | 2020-10-20 | 2020-10-26 | 66 |  | Antariksh Narain |
| 73 | 3.2.2.3.2 | Sensor Library | 5d | 2020-10-27 | 2020-11-02 | 72 |  | Antariksh Narain |
| 74 | 3.2.2.3.3 | Controller | 5d | 2020-11-03 | 2020-11-09 | 73, 72 |  | Garrett Gibo |
| 75 | 3.2.2.4 | Test TVC system | 5d | 2020-11-10 | 2020-11-16 | 40, 43, 59, 66, 71 |  | Antariksh Narain; Garrett Gibo |
| 76 | 3.3 | **Competition Simulation** | 56d? | 2020-09-14 | 2020-11-30 |  | start no earlier than 2020-09-14 |  |
| 77 | 3.3.1 | Linear Actuator Model | 2d | 2020-09-14 | 2020-09-15 |  | start no earlier than 2020-09-14 | Garrett Gibo |
| 78 | 3.3.2 | Gimbal System Model | 2d | 2020-09-14 | 2020-09-15 |  |  | Jose |
| 79 | 3.3.3 | ACS Thrusters Model | 3d | 2020-09-14 | 2020-09-16 |  |  | Andrew Fletcher |
| 80 | 3.3.4 | Vehicle Geometry and MOI Model | 5d? | 2020-09-17 | 2020-09-23 | 77, 78, 79 |  | Garrett Gibo; Jose; Andrew Fletcher |
| 81 | 3.3.5 | Controller Take-off and Landing | 5d | 2020-11-10 | 2020-11-16 | 71, 80 |  | Garrett Gibo |
| 82 | 3.3.6 | Controller ACS | 5d | 2020-11-17 | 2020-11-23 | 53, 79, 81 |  | Andrew Fletcher |
| 83 | 3.3.7 | Controller Waypoint | 5d | 2020-11-24 | 2020-11-30 | 81, 82 |  | Garrett Gibo |

| ID | WBS | Task | Duration | Start | Finish | Predecessors | Constraint | Resources |
| --- | --- | --- | --- | --- | --- | --- | --- | --- |
| 84 | 4 | **Electronics** | 15d | 2020-09-21 | 2020-10-09 |  | start no earlier than 2020-09-21 |  |
| 85 | 4.1 | PCB design for ACS | 5d | 2020-09-21 | 2020-09-25 |  |  | Jose |
| 86 | 4.2 | PCB design for TVC | 5d | 2020-09-21 | 2020-09-25 |  |  | Jose |
| 87 | 4.3 | Component placement on vehicle | 5d | 2020-09-21 | 2020-09-25 |  |  | Jose |
| 88 | 4.4 | Circuit Design | 10d | 2020-09-28 | 2020-10-09 | 85, 86 |  | Jose |
| 89 | 5 | **Test and Validation** | 33d? | 2020-09-14 | 2020-10-28 |  | start no earlier than 2020-09-14 |  |
| 90 | 5.1 | **ACS Stability Tests** | 4d? | 2020-09-14 | 2020-09-17 |  |  |  |
| 91 | 5.1.1 | Update hdwe Config for ACS on AB | 2d | 2020-09-14 | 2020-09-15 |  |  | Nikita Persikov |
| 92 | 5.1.2 | Update rought MOI/CG | 1d | 2020-09-16 | 2020-09-16 | 91 |  | Nikita Persikov |
| 93 | 5.1.3 | Upload new S/W | 1d? | 2020-09-16 | 2020-09-16 | 91 |  | Antariksh Narain |
| 94 | 5.1.4 | Test | 1d | 2020-09-17 | 2020-09-17 | 93 |  | Antariksh Narain; Nikita Persikov |
| 95 | 5.2 | **Gimbal Stability Tests** | 17d? | 2020-10-06 | 2020-10-28 | 67 |  |  |
| 96 | 5.2.1 | Design Lab level Testbed | 5d | 2020-10-06 | 2020-10-12 |  |  | Antariksh Narain |
| 97 | 5.2.2 | Procure Parts | 5d | 2020-10-13 | 2020-10-19 | 96 |  | Antariksh Narain |
| 98 | 5.2.3 | Build Testunit | 5d | 2020-10-20 | 2020-10-26 | 97 |  | Jose |
| 99 | 5.2.4 | Hook up PX4 and Bench Electronics | 1d? | 2020-10-27 | 2020-10-27 | 98 |  | Antariksh Narain |
| 100 | 5.2.5 | Install S/W and Test | 1d? | 2020-10-28 | 2020-10-28 | 99 |  | Antariksh Narain |
| 101 | 5.3 | **Static Hold Down Hot Fire** | 15d? | 2020-09-14 | 2020-10-02 |  |  |  |
| 102 | 5.3.1 | Design Test STand | 5d | 2020-09-14 | 2020-09-18 |  |  | Dimitri Gianousopoulos |
| 103 | 5.3.2 | Procure Parts | 5d | 2020-09-21 | 2020-09-25 | 102 |  | Dimitri Gianousopoulos |
| 104 | 5.3.3 | Build Test Stand | 3d | 2020-09-28 | 2020-09-30 | 103 |  | Nikita Persikov |
| 105 | 5.3.4 | TRansport to Suitable Field | 1d? | 2020-10-01 | 2020-10-01 | 104 |  |  |
| 106 | 5.3.5 | Prepare Vehicle, Transport to Field | 1d? | 2020-10-01 | 2020-10-01 | 104 |  | Antariksh Narain |
| 107 | 5.3.6 | Test | 1d? | 2020-10-02 | 2020-10-02 | 106 |  |  |

| ID | WBS | Task | Duration | Start | Finish | Predecessors | Constraint | Resources |
| --- | --- | --- | --- | --- | --- | --- | --- | --- |
| 108 | 6 | **Competition Team Development** | 3d? | 2020-09-14 | 2020-09-16 |  | start no earlier than 2020-09-14 |  |
| 109 | 6.1 | identify Timeline and Schedule | 3d | 2020-09-14 | 2020-09-16 |  |  | Shreya Nagpal |
| 110 | 6.2 | Identify 6 Initial Regions | 3d | 2020-09-14 | 2020-09-16 |  |  | Bianca Monique Luansing |
| 111 | 6.3 | **Identify RC Fields in Regions** | 1.5d? | 2020-09-14 | 2020-09-15 |  |  | Than Tran |
| 112 | 6.3.1 | Make list of all RC Fields and capabilities | 1d? | 2020-09-14 | 2020-09-14 |  |  |  |
| 113 | 6.3.2 | Narrow down likely ones and contact | 0.5d? | 2020-09-15 | 2020-09-15 | 112 |  |  |
| 114 | 6.4 | Develop Competition Metrics | 3d | 2020-09-14 | 2020-09-16 |  |  |  |
| 115 | 6.5 | **Web Site and Marketing Campaign** | 1d? | 2020-09-14 | 2020-09-14 |  |  |  |
| 116 | 6.5.1 | Layout and Develop Website | 1d? | 2020-09-14 | 2020-09-14 |  |  |  |
| 117 | 6.5.2 | Gather E-mails for likely universities | 1d? | 2020-09-14 | 2020-09-14 |  |  |  |
| 118 | 6.5.3 | Create the First Survey | 1d? | 2020-09-14 | 2020-09-14 |  |  |  |
| 119 | 6.5.4 | Link Qualtrics to Survey INputs | 1d? | 2020-09-14 | 2020-09-14 |  |  |  |
| 120 | 6.5.5 | Link Qualtrics to Website | 1d? | 2020-09-14 | 2020-09-14 |  |  |  |
| 121 | 6.5.6 | Install Web HTML Code to Server | 1d? | 2020-09-14 | 2020-09-14 |  |  |  |
| 122 | 6.6 | Hold first Competition Introduction Day | 1d? | 2020-09-14 | 2020-09-14 |  |  |  |
| 123 | 6.7 | Update Database of potential Teams | 1d? | 2020-09-14 | 2020-09-14 |  |  |  |
| 124 | 6.8 | Identify and select Flight Coordinator Universities | 1d? | 2020-09-14 | 2020-09-14 |  |  |  |
| 125 | 6.9 | Send out Notices, Announce First Competition | 1d? | 2020-09-14 | 2020-09-14 |  |  |  |
| 126 | 7 | **Safety** | 10d | 2020-10-05 | 2020-10-19 | 1 |  |  |
| 127 | 7.1 | Procedure | 10d | 2020-10-05 | 2020-10-19 |  |  |  |
| 128 | 7.2 | Documentation | 10d | 2020-10-05 | 2020-10-19 |  |  |  |
| 129 | 8 | Run First Competition-Software | 1d? | 2020-09-09 | 2020-09-09 |  |  |  |
| 130 | 9 | Prepare for Summer 2021 Flight | 1d? | 2020-09-09 | 2020-09-09 |  |  |  |
| 131 | 10 | Run Summer 2021 Flight Competition | 1d? | 2020-09-09 | 2020-09-09 |  |  |  |

| ID | WBS | Task | Duration | Start | Finish | Predecessors | Resources |
| --- | --- | --- | --- | --- | --- | --- | --- |
| 132 | 11 | **Code Repository** | 34d | 2020-09-09 | 2020-10-26 |  |  |
| 133 | 11.1 | Setup GitLab Repository | 3d | 2020-09-09 | 2020-09-11 |  | Camden Jones |
| 134 | 11.2 | Create wiki pages to setup systems | 10d | 2020-09-09 | 2020-09-22 |  | Kunal Singla |
| 135 | 11.3 | Create branches to share simulation code | 3d | 2020-09-14 | 2020-09-16 | 133 | Camden Jones |
| 136 | 11.4 | Create branches to share hardware code | 3d | 2020-09-17 | 2020-09-21 | 135 | Camden Jones |
| 137 | 11.5 | Setup pipeline to test code at check-in | 10d | 2020-09-22 | 2020-10-05 | 136 | Camden Jones |
| 138 | 11.6 | Create team rooms (private repository for teams) - Automated | 5d | 2020-10-06 | 2020-10-12 | 137 | Camden Jones |
| 139 | 11.7 | Create test cases for code validation | 10d | 2020-10-13 | 2020-10-26 | 138 | Camden Jones |
