# LEAPFROG-Software plan

Schedule from ProjectLibre, 2020-09-21 to 2020-12-15.

## Calendars

- Standard: Mon-Fri 08:00-12:00, 13:00-17:00; Sat-Sun off.

## Resources

| Resource | Group |
| --- | --- |
| Unassigned |  |
| Antariksh Narain | Software / Hardware |
| Kunal Singla | Software |
| Garrett Gibo | Software |
| Andrew Fletcher | Software |
| Jose | Hardware / Software |
| Isabel Yarwood Perez | Hardware / Competition |
| Kenya Foster | Mechanical |
| Dimitri Gianousopoulos | Hardware |
| Shreya Nagpal | Competition |
| Bianca Monique Luansing | Competition |
| Than Tran | Competition / Software |
| Michael Smat | Mechanical |
| Hubert Wang | Hardware |
| Dan Borgan | Mechanical |
| Nikita Persikov | Hardware / Mechanical |
| Dave Barnhart | Hardware / Mechanical |

## Schedule

| ID | WBS | Task | Duration | Start | Finish | Predecessors | Resources |
| --- | --- | --- | --- | --- | --- | --- | --- |
| 1 | 1 | **Simulation** | 28d | 2020-09-21 | 2020-10-28 |  |  |
| 2 | 1.1 | Import updated vehicle in Gazebo | 5d | 2020-09-21 | 2020-09-25 |  | Garrett Gibo |
| 3 | 1.2 | **Create ROS interfaces** | 8d | 2020-09-21 | 2020-09-30 |  |  |
| 4 | 1.2.1 | **Input to** | 8d | 2020-09-21 | 2020-09-30 |  |  |
| 5 | 1.2.1.1 | Linear actuator | 3d | 2020-09-21 | 2020-09-23 |  | Antariksh Narain |
| 6 | 1.2.1.2 | Engine thrust | 3d | 2020-09-24 | 2020-09-28 | 5 | Antariksh Narain |
| 7 | 1.2.1.3 | Cold gas thruster | 2d | 2020-09-29 | 2020-09-30 | 6 | Antariksh Narain |
| 8 | 1.2.2 | **Output from** | 6d | 2020-09-21 | 2020-09-28 |  |  |
| 9 | 1.2.2.1 | Base orientation (IMU) | 3d | 2020-09-21 | 2020-09-23 |  | Andrew Fletcher |
| 10 | 1.2.2.2 | Gimbal orientation (IMU) | 1d | 2020-09-24 | 2020-09-24 | 9 | Andrew Fletcher |
| 11 | 1.2.2.3 | Linear actuator (position) | 1d | 2020-09-25 | 2020-09-25 | 10 | Andrew Fletcher |
| 12 | 1.2.2.4 | Laser sensor (Altitude) | 1d | 2020-09-28 | 2020-09-28 | 11 | Andrew Fletcher |
| 13 | 1.3 | **Connect PX4 software** | 25d | 2020-09-21 | 2020-10-23 |  |  |
| 14 | 1.3.1 | To output interfaces | 5d | 2020-09-21 | 2020-09-25 |  | Andrew Fletcher |
| 15 | 1.3.2 | **Tune the controller** | 20d | 2020-09-28 | 2020-10-23 | 14 |  |
| 16 | 1.3.2.1 | Gimbal | 5d | 2020-09-28 | 2020-10-02 |  | Jose |
| 17 | 1.3.2.2 | Engine thrust | 5d | 2020-10-05 | 2020-10-09 | 16 | Jose |
| 18 | 1.3.2.3 | Translation (vertical) | 5d | 2020-10-12 | 2020-10-16 | 17 | Jose |
| 19 | 1.3.2.4 | Translation (3-D space) | 5d | 2020-10-19 | 2020-10-23 | 18 | Jose |
| 20 | 1.4 | **Flight Simulation Test** | 3d | 2020-10-26 | 2020-10-28 | 3, 13 |  |
| 21 | 1.4.1 | Simple waypoint test | 1.5d | 2020-10-26 | 2020-10-27 |  | Andrew Fletcher; Antariksh Narain |
| 22 | 1.4.2 | Stress test | 1.5d | 2020-10-27 | 2020-10-28 | 21 | Andrew Fletcher; Antariksh Narain |
| 23 | 2 | **Hardware** | 62d | 2020-09-21 | 2020-12-15 |  |  |
| 24 | 2.1 | Analyze ACS system on Gen1 and migration to Artemis | 5d | 2020-09-21 | 2020-09-25 |  | Kenya Foster |

| ID | WBS | Task | Duration | Start | Finish | Predecessors | Resources |
| --- | --- | --- | --- | --- | --- | --- | --- |
| 25 | 2.2 | **Performance specification (Theoretical)** | 6d | 2020-09-21 | 2020-09-28 |  |  |
| 26 | 2.2.1 | Cold gas thruster | 2d | 2020-09-21 | 2020-09-22 |  | Kenya Foster |
| 27 | 2.2.2 | Engine | 2d | 2020-09-23 | 2020-09-24 | 26 | Kenya Foster |
| 28 | 2.2.3 | Gimbal | 2d | 2020-09-25 | 2020-09-28 | 27 | Kenya Foster |
| 29 | 2.3 | **Performance specification (Practical)** | 16d | 2020-11-19 | 2020-12-10 | 4, 25, 44 |  |
| 30 | 2.3.1 | **Cold gas thruster** | 4d | 2020-11-19 | 2020-11-24 |  |  |
| 31 | 2.3.1.1 | Raw connection | 1d | 2020-11-19 | 2020-11-19 |  | Antariksh Narain |
| 32 | 2.3.1.2 | Mount on vehicle with test stand | 3d | 2020-11-20 | 2020-11-24 | 31 | Antariksh Narain |
| 33 | 2.3.2 | **Engine** | 8d | 2020-11-25 | 2020-12-04 | 30, 4 |  |
| 34 | 2.3.2.1 | Raw test without fuel line | 3d | 2020-11-25 | 2020-11-27 |  | Antariksh Narain |
| 35 | 2.3.2.2 | Thrust test with fuel line | 2d | 2020-11-30 | 2020-12-01 | 34 | Antariksh Narain |
| 36 | 2.3.2.3 | Thrust test on vehicle | 3d | 2020-12-02 | 2020-12-04 | 35 | Antariksh Narain |
| 37 | 2.3.3 | **Gimbal** | 4d | 2020-12-07 | 2020-12-10 | 33 |  |
| 38 | 2.3.3.1 | Raw test without engine | 1d | 2020-12-07 | 2020-12-07 |  | Antariksh Narain |
| 39 | 2.3.3.2 | Raw test with engine | 1d | 2020-12-08 | 2020-12-08 | 38 | Antariksh Narain |
| 40 | 2.3.3.3 | Thrust vectoring with engine (tilted vehicle?) | 2d | 2020-12-09 | 2020-12-10 | 39 | Antariksh Narain |
| 41 | 2.4 | **Battery test** | 3d | 2020-12-11 | 2020-12-15 | 29 |  |
| 42 | 2.4.1 | Pseudo actuation | 1d | 2020-12-11 | 2020-12-11 |  | Jose |
| 43 | 2.4.2 | with full load | 2d | 2020-12-14 | 2020-12-15 | 42 | Jose |
| 44 | 3 | **Flight Software** | 35d | 2020-10-01 | 2020-11-18 |  |  |
| 45 | 3.1 | **ACS** | 4d | 2020-10-01 | 2020-10-06 |  |  |
| 46 | 3.1.1 | **Simultaneous actuation (validation)** | 3d | 2020-10-01 | 2020-10-05 | 4 |  |
| 47 | 3.1.1.1 | Action Lib [H/S] | 1d | 2020-10-01 | 2020-10-01 |  | Antariksh Narain |
| 48 | 3.1.1.2 | Feedback Lib (orientation) [H/S] | 2d | 2020-10-02 | 2020-10-05 | 47 | Antariksh Narain |
| 49 | 3.1.2 | Relay actuation | 1d | 2020-10-06 | 2020-10-06 | 46 | Antariksh Narain |

| ID | WBS | Task | Duration | Start | Finish | Predecessors | Resources |
| --- | --- | --- | --- | --- | --- | --- | --- |
| 50 | 3.2 | **Gimbal** | 4d | 2020-10-06 | 2020-10-09 | 46 |  |
| 51 | 3.2.1 | **independent ring movement** | 3d | 2020-10-06 | 2020-10-08 |  |  |
| 52 | 3.2.1.1 | Action Lib [H/S] | 1d | 2020-10-06 | 2020-10-06 |  | Antariksh Narain |
| 53 | 3.2.1.2 | Feedback Lib (orientation) [H/S] | 2d | 2020-10-07 | 2020-10-08 | 52 | Antariksh Narain |
| 54 | 3.2.2 | Relay actuation | 1d | 2020-10-09 | 2020-10-09 | 51 | Antariksh Narain |
| 55 | 3.3 | **Engine** | 7d | 2020-10-12 | 2020-10-20 | 50 |  |
| 56 | 3.3.1 | Start / Stop engine | 2d | 2020-10-14 | 2020-10-15 | 58 | Antariksh Narain |
| 57 | 3.3.2 | Fuel consumption (feedback) | 3d | 2020-10-16 | 2020-10-20 | 56 | Antariksh Narain |
| 58 | 3.3.3 | **Thrust control** | 2d | 2020-10-12 | 2020-10-13 |  |  |
| 59 | 3.3.3.1 | Action Lib [H/S] | 2d | 2020-10-12 | 2020-10-13 |  | Antariksh Narain |
| 60 | 3.3.3.2 | Feedback Lib (Altitude, force (N)) [H/S] | 2d | 2020-10-12 | 2020-10-13 |  | Antariksh Narain |
| 61 | 3.4 | **TVC translation** | 18d | 2020-10-26 | 2020-11-18 | 13 |  |
| 62 | 3.4.1 | Tune PX4 controller for gimbal | 3d | 2020-10-26 | 2020-10-28 |  | Nikita Persikov |
| 63 | 3.4.2 | Tune PX4 controller for engine | 3d | 2020-10-29 | 2020-11-02 | 62 | Nikita Persikov |
| 64 | 3.4.3 | **Tune PX4 controller** | 7d | 2020-11-03 | 2020-11-11 | 63 |  |
| 65 | 3.4.3.1 | translate in x | 2d | 2020-11-03 | 2020-11-04 |  | Antariksh Narain |
| 66 | 3.4.3.2 | translate in y | 2d | 2020-11-05 | 2020-11-06 | 65 | Antariksh Narain |
| 67 | 3.4.3.3 | translate in x,y | 3d | 2020-11-09 | 2020-11-11 | 65, 66 | Antariksh Narain |
| 68 | 3.4.4 | **Tune PX4 controller** | 5d | 2020-11-12 | 2020-11-18 | 64 |  |
| 69 | 3.4.4.1 | translate in x,y,z | 5d | 2020-11-12 | 2020-11-18 | 64 | Nikita Persikov |
| 70 | 4 | **Power Systems** | 50d | 2020-09-21 | 2020-11-27 |  |  |
| 71 | 4.1 | **Theoretical** | 13d | 2020-09-21 | 2020-10-07 |  |  |
| 72 | 4.1.1 | Connection diagram | 2d | 2020-09-21 | 2020-09-22 |  | Jose |
| 73 | 4.1.2 | Power analysis | 3d | 2020-09-23 | 2020-09-25 | 72 | Jose |
| 74 | 4.1.3 | PCB design with recharge ports | 5d | 2020-09-28 | 2020-10-02 | 73 | Jose |
| 75 | 4.1.4 | Battery power feedback | 3d | 2020-10-05 | 2020-10-07 | 74 | Jose |

| ID | WBS | Task | Duration | Start | Finish | Predecessors | Resources |
| --- | --- | --- | --- | --- | --- | --- | --- |
| 76 | 4.2 | **Assembly** | 7d | 2020-11-19 | 2020-11-27 | 44, 71 |  |
| 77 | 4.2.1 | **ACS** | 2d | 2020-11-19 | 2020-11-20 |  |  |
| 78 | 4.2.1.1 | Place solenoid valves | 1d | 2020-11-19 | 2020-11-19 |  | Nikita Persikov |
| 79 | 4.2.1.2 | Connection to main board | 1d | 2020-11-19 | 2020-11-19 |  | Antariksh Narain |
| 80 | 4.2.1.3 | Connect fuel lines | 1d | 2020-11-19 | 2020-11-19 |  | Antariksh Narain |
| 81 | 4.2.1.4 | Connect pressure sensors | 1d | 2020-11-19 | 2020-11-19 |  | Antariksh Narain |
| 82 | 4.2.1.5 | Assembly test | 1d | 2020-11-20 | 2020-11-20 | 78, 79, 80, 81 | Antariksh Narain |
| 83 | 4.2.2 | **Gimbal** | 7d | 2020-11-19 | 2020-11-27 |  |  |
| 84 | 4.2.2.1 | Mount ring | 2d | 2020-11-19 | 2020-11-20 |  | Nikita Persikov |
| 85 | 4.2.2.2 | Mount engine | 1d | 2020-11-26 | 2020-11-26 | 89 | Nikita Persikov |
| 86 | 4.2.2.3 | Connect linear actuators | 1d | 2020-11-19 | 2020-11-19 |  | Antariksh Narain |
| 87 | 4.2.2.4 | Connect gimbal IMU sensor | 1d | 2020-11-19 | 2020-11-19 |  | Antariksh Narain |
| 88 | 4.2.2.5 | Assembly test | 1d | 2020-11-27 | 2020-11-27 | 84, 85, 86, 87 | Antariksh Narain |
| 89 | 4.2.3 | **Engine** | 5d | 2020-11-19 | 2020-11-25 |  |  |
| 90 | 4.2.3.1 | Connect engine to interface | 2d | 2020-11-19 | 2020-11-20 |  | Antariksh Narain |
| 91 | 4.2.3.2 | Pseudo engine connection test | 3d | 2020-11-23 | 2020-11-25 | 90 | Antariksh Narain |
| 92 | 5 | **Testing** | 8d | 2020-11-30 | 2020-12-09 |  |  |
| 93 | 5.1 | **Validate charging and battery feedback** | 3d | 2020-11-30 | 2020-12-02 |  |  |
| 94 | 5.1.1 | Full flight procedure test | 1d | 2020-11-30 | 2020-11-30 | 76 | Andrew Fletcher |
| 95 | 5.1.2 | Pseudo (without engine fire) | 1d | 2020-12-01 | 2020-12-01 | 94 | Antariksh Narain |
| 96 | 5.1.3 | Real (with engine fire) | 1d | 2020-12-02 | 2020-12-02 | 95 | Antariksh Narain |
| 97 | 5.2 | **Flight test** | 5d | 2020-12-03 | 2020-12-09 |  |  |
| 98 | 5.2.1 | Lift off and land | 2d | 2020-12-03 | 2020-12-04 | 93 | Antariksh Narain |
| 99 | 5.2.2 | Waypoint navigation | 3d | 2020-12-07 | 2020-12-09 | 98 | Antariksh Narain |

| ID | WBS | Task | Duration | Start | Finish | Predecessors | Constraint | Resources |
| --- | --- | --- | --- | --- | --- | --- | --- | --- |
| 100 | 6 | **Code Repository** | 44d | 2020-09-21 | 2020-11-19 |  |  |  |
| 101 | 6.1 | Setup GitLab Repository | 3d | 2020-09-21 | 2020-09-23 |  |  | Antariksh Narain |
| 102 | 6.2 | Create wiki pages to setup systems | 10d | 2020-09-24 | 2020-10-07 | 101 |  | Antariksh Narain |
| 103 | 6.3 | Create branches to share simulation code | 3d | 2020-10-08 | 2020-10-12 | 102 |  | Antariksh Narain |
| 104 | 6.4 | Create branches to share hardware code | 3d | 2020-10-13 | 2020-10-15 | 103 |  | Antariksh Narain |
| 105 | 6.5 | Setup pipeline to test code at check-in | 10d | 2020-10-16 | 2020-10-29 | 104 | start no earlier than 2020-09-22 | Antariksh Narain |
| 106 | 6.6 | Create team rooms (private repository for teams) - Automated | 5d | 2020-10-30 | 2020-11-05 | 105 | start no earlier than 2020-10-06 | Antariksh Narain |
| 107 | 6.7 | Create test cases for code validation | 10d | 2020-11-06 | 2020-11-19 | 106 | start no earlier than 2020-10-13 | Antariksh Narain |
| 108 | 7 | Miscellaneous | 1d? | 2020-09-21 | 2020-09-21 |  |  |  |
